# Avance Faltante

Schedule from MS Project, 2016-05-04 to 2016-05-31, A marks actual dates.

## Calendars

- Estándar: Mon-Fri 09:00-13:00, 15:00-19:00; Sat-Sun off.

## Resources

| Resource |
| --- |
| José Camacho |
| Felipe Zavala |
| Rodrigo Carrasco |
| TOYOTA |
| David Espinoza |
| Francisco Guerra |

## Schedule

| ID | WBS | Task | Duration | Start | Finish | Predecessors | Complete | Remaining | Total slack | Resources | Work | Actual work |
| --- | --- | --- | --- | --- | --- | --- | --- | --- | --- | --- | --- | --- |
| 1 | 1 | **Mantenimiento correctivo - Integraciones Toyota** | 19d | 2016-05-04 A | 2016-05-30 |  | 30% | 13.37d | 0d |  | 536h | 120h |
| 2 | 1.1 | Envío layouts TOYOTA | 1d | 2016-05-04 A | 2016-05-04 A |  | 100% |  |  | TOYOTA | 8h | 8h |
| 3 | 1.2 | Estudio y revisión integraciones | 7d | 2016-05-05 A | 2016-05-13 A | 2 | 100% |  |  | José Camacho; Felipe Zavala | 112h | 112h |
| 4 | 1.3 | Coordinación (resolver dudas y avanzar) | 1d | 2016-05-16 | 2016-05-16 | 3 |  |  | 0d | José Camacho; Felipe Zavala; TOYOTA | 24h |  |
| 5 | 1.4 | Modificar queries y programas | 4d | 2016-05-17 | 2016-05-20 | 4 |  |  | 0d | José Camacho; Felipe Zavala | 64h |  |
| 6 | 1.5 | Coordinación con Ventas | 3d | 2016-05-18 | 2016-05-20 | 5FF |  |  | 0d | José Camacho; Felipe Zavala; David Espinoza | 72h |  |
| 7 | 1.6 | Generación informe semanal | 2d | 2016-05-23 | 2016-05-24 | 6 |  |  | 4d | David Espinoza | 16h |  |
| 8 | 1.7 | Pruebas integradas con Toyota | 3d | 2016-05-23 | 2016-05-25 | 6 |  |  | 0d | Felipe Zavala; TOYOTA; José Camacho | 72h |  |
| 9 | 1.8 | Aprobación de las pruebas (diario + semanal) | 3d | 2016-05-26 | 2016-05-30 | 8 |  |  | 0d | Felipe Zavala; TOYOTA; José Camacho; David Espinoza | 96h |  |
| 10 | 1.9 | Paso a Producción | 3d | 2016-05-26 | 2016-05-30 | 8 |  |  | 0d | Felipe Zavala; TOYOTA; José Camacho | 72h |  |
| 11 | 2 | HITO: Reunión de cierre | 1d | 2016-05-31 | 2016-05-31 | 1 |  |  | 0d | Rodrigo Carrasco; TOYOTA; Francisco Guerra | 24h |  |
